# PlanningValidation

Schedule from MS Project, 2013-03-04 to 2013-04-01, A marks actual dates.

## Calendars

- Standard[Imported]: Mon-Fri 08:00-12:00, 13:00-17:00; Sat-Sun off.

## Resources

| Resource | Group |
| --- | --- |
| Non affecté |  |
| Andrei | Validation |
| Anton | Validation |
| Konstantin | Validation |
| Valid-FLO |  |
| TestBench |  |

## Schedule

| ID | WBS | Task | Type | Duration | Start | Finish | Predecessors | Complete | Remaining | Total slack | Constraint | Resources | Work | Actual work |
| --- | --- | --- | --- | --- | --- | --- | --- | --- | --- | --- | --- | --- | --- | --- |
| 1 | 1 | **STR3** |  | 13d | 2013-03-08 A | 2013-03-26 |  | 43% | 7.41d | 4d |  |  | 200h | 172h |
| 2 | 1.1 | VTD - Control and Monitor the Batteries Charge |  | 1d | 2013-03-13 | 2013-03-13 |  |  |  | 13d | start no earlier than 2013-03-13 |  |  |  |
| 3 | 1.2 | VTD - Control of microclimate system |  | 3d | 2013-03-11 A | 2013-03-13 A |  | 100% |  |  | start no earlier than 2013-03-11 | Andrei | 24h | 24h |
| 4 | 1.3 | VTD - Parking mode in activate state |  | 3d | 2013-03-22 A | 2013-03-25 |  | 50% | 1.5d | 5d | start no earlier than 2013-03-22 | Andrei | 24h | 12h |
| 5 | 1.4 | VTD - Manage km-meter and operating times |  | 1d | 2013-03-19 A | 2013-03-19 A |  | 100% |  |  | start no earlier than 2013-03-19 | Andrei | 8h | 8h |
| 6 | 1.5 | VTD - Machine Room Ventilation System |  | 1d | 2013-03-20 A | 2013-03-20 A |  | 100% |  |  | start no earlier than 2013-03-20 | Andrei | 8h | 8h |
| 7 | 1.6 | VTD - Sanding System Management |  | 3d | 2013-03-14 A | 2013-03-18 A |  | 100% |  |  | start no earlier than 2013-03-14 | Andrei | 24h | 24h |
| 8 | 1.7 | VTD - Antislide Protection System (WSP) |  | 3d | 2013-03-23 A | 2013-03-26 |  | 33% | 2d | 4d | start no earlier than 2013-03-23 | Konstantin | 24h | 8h |
| 9 | 1.8 | VTD - Brake Substitution Control |  | 3d | 2013-03-14 | 2013-03-18 |  |  |  | 10d | start no earlier than 2013-03-14 |  |  |  |
| 10 | 1.9 | VTD - Management of auxiliary loads contactors |  | 3d | 2013-03-18 A | 2013-03-20 A |  | 100% |  |  | start no earlier than 2013-03-18 | Konstantin | 24h | 24h |
| 11 | 1.10 | VTD - Detect and report a fire and fire extinction |  | 1d | 2013-03-21 | 2013-03-21 |  |  |  | 7d | start no earlier than 2013-03-21 |  |  |  |
| 12 | 1.11 | VTD - Axle-box bearings temperature control |  | 1d | 2013-03-14 | 2013-03-14 |  |  |  | 12d | start no earlier than 2013-03-14 |  |  |  |
| 13 | 1.12 | VTD - Bring Train into Service. Part 2 - Selection of active section (cab) |  | 2d | 2013-03-20 | 2013-03-21 |  |  |  | 7d | start no earlier than 2013-03-20 |  |  |  |
| 14 | 1.13 | VTD - Develop Driving Orders | manual | 4d | 2013-03-13 A | 2013-03-18 A |  | 100% |  |  | start no earlier than 2013-03-13 | Anton | 32h | 32h |
| 15 | 1.14 | VTD - Provision and Management of 110 V Supply |  | 2d | 2013-03-15 | 2013-03-18 |  |  |  | 10d | start no earlier than 2013-03-15 |  |  |  |
| 16 | 1.15 | VTD - Indicate Locomotive Presence (Acoustic Way) |  | 1d | 2013-03-18 | 2013-03-18 |  |  |  | 10d | start no earlier than 2013-03-18 |  |  |  |
| 17 | 1.16 | VTD - Measure and Indicate the Train Speed |  | 1d | 2013-03-23 A | 2013-03-23 A |  | 100% |  |  | start no earlier than 2013-03-23 | Anton | 8h | 8h |
| 18 | 1.17 | VTD - Parking brake control |  | 3d | 2013-03-18 | 2013-03-20 |  |  |  | 8d | start no earlier than 2013-03-18 |  |  |  |
| 19 | 1.18 | VTD - Compressed Air Production |  | 2d | 2013-03-18 | 2013-03-19 |  |  |  | 9d | start no earlier than 2013-03-18 |  |  |  |
| 20 | 1.19 | VTD - Manage the high voltage configuration (Desk control) |  | 1d | 2013-03-19 A | 2013-03-19 A |  | 100% |  |  | start no earlier than 2013-03-19 | Anton | 8h | 8h |
| 21 | 1.20 | VTD - Compressed Air Distribution |  | 2d | 2013-03-22 | 2013-03-25 |  |  |  | 5d | start no earlier than 2013-03-22 |  |  |  |
| 22 | 1.21 | VTD - Control the circuit breaker (Desk control) |  | 1d | 2013-03-08 | 2013-03-08 |  |  |  | 16d | start no earlier than 2013-03-08 |  |  |  |
| 23 | 1.22 | VTD - Manage the pantographs (Desk control) |  | 1d | 2013-03-18 | 2013-03-18 |  |  |  | 10d | start no earlier than 2013-03-18 |  |  |  |
| 24 | 1.23 | VTD - Grounding of the locomotive |  | 1d | 2013-03-12 | 2013-03-12 |  |  |  | 14d | start no earlier than 2013-03-12 |  |  |  |
| 25 | 1.24 | VTD - Pneumatic brake control |  | 2d | 2013-03-18 | 2013-03-19 |  |  |  | 9d | start no earlier than 2013-03-18 |  |  |  |
| 26 | 1.25 | VTD - Tape operating data |  | 1d | 2013-03-15 A | 2013-03-15 A |  | 100% |  |  | start no earlier than 2013-03-15 | Konstantin | 8h | 8h |
| 27 | 1.26 | VTD - Broadcast the time |  | 1d | 2013-03-18 | 2013-03-18 |  |  |  | 10d | start no earlier than 2013-03-18 |  |  |  |
| 28 | 1.27 | VTD - Generate Sounds |  | 1d | 2013-03-22 | 2013-03-22 |  |  |  | 6d | start no earlier than 2013-03-22 |  |  |  |
| 29 | 1.28 | VTD - Administrate locomotive topology (HMI Part) |  | 1d | 2013-03-20 A | 2013-03-20 A |  | 100% |  |  | start no earlier than 2013-03-20 | Anton | 8h | 8h |
| 30 | 2 | Test on Testbench | manual | 1d? | 2013-03-04 | 2013-03-04 |  |  |  |  |  |  |  |  |
| 31 | 3 | STR3 - RUN - Control and Monitor the Batteries Charge |  | 1d | 2013-04-01 | 2013-04-01 | 59 |  |  | 0d | start no earlier than 2013-04-01 | Valid-FLO | 8h |  |
| 32 | 4 | STR3 - RUN - Control of microclimate system |  | 1d | 2013-03-25 | 2013-03-25 | 59 |  |  | 5d | start no earlier than 2013-03-25 | Valid-FLO | 8h |  |
| 33 | 5 | STR3 - RUN - Parking mode in activate state | manual | 2d | 2013-03-04 | 2013-03-05 |  |  |  |  |  |  |  |  |
| 34 | 6 | STR3 - RUN - Manage km-meter and operating times |  | 1d | 2013-03-28 | 2013-03-28 | 59 |  |  | 2d | start no earlier than 2013-03-28 | Valid-FLO | 8h |  |
| 35 | 7 | STR3 - RUN - Machine Room Ventilation System |  | 1d | 2013-03-26 | 2013-03-26 | 59 |  |  | 4d | start no earlier than 2013-03-26 | Valid-FLO | 8h |  |
| 36 | 8 | STR3 - RUN - Sanding System Management |  | 1d | 2013-03-27 | 2013-03-27 | 59 |  |  | 3d | start no earlier than 2013-03-27 | Valid-FLO | 8h |  |
| 37 | 9 | STR3 - RUN - Antislide Protection System (WSP) |  | 1d | 2013-03-30 | 2013-03-30 | 59 |  |  | 0d | start no earlier than 2013-03-30 | Valid-FLO | 8h |  |
| 38 | 10 | STR3 - RUN - Brake Substitution Control | manual | 2d? | 2013-03-04 | 2013-03-05 |  |  |  |  |  |  |  |  |
| 39 | 11 | STR3 - RUN - Management of auxiliary loads contactors | manual | 2d | 2013-03-04 | 2013-03-05 |  |  |  |  |  |  |  |  |
| 40 | 12 | STR3 - RUN - Detect and report a fire and fire extinction |  | 1d | 2013-03-29 | 2013-03-29 | 59 |  |  | 1d | start no earlier than 2013-03-29 | Valid-FLO | 8h |  |
| 41 | 13 | STR3 - RUN - Axle-box bearings temperature control | manual | 1d | 2013-03-04 | 2013-03-04 |  |  |  |  |  |  |  |  |
| 42 | 14 | STR3 - RUN - Bring Train into Service. Part 2 - Selection of active section (cab) | manual | 1d | 2013-03-04 | 2013-03-04 |  |  |  |  |  |  |  |  |
| 43 | 15 | VTD - Develop Driving Orders | manual | 1d | 2013-03-04 | 2013-03-04 |  |  |  |  |  |  |  |  |
| 44 | 16 | VTD - Provision and Management of 110 V Supply | manual | 1d | 2013-03-04 | 2013-03-04 |  |  |  |  |  |  |  |  |
| 45 | 17 | VTD - Indicate Locomotive Presence (Acoustic Way) | manual | 1d | 2013-03-04 | 2013-03-04 |  |  |  |  |  |  |  |  |
| 46 | 18 | VTD - Measure and Indicate the Train Speed | manual | 1d | 2013-03-04 | 2013-03-04 |  |  |  |  |  |  |  |  |
| 47 | 19 | VTD - Parking brake control | manual | 1d | 2013-03-04 | 2013-03-04 |  |  |  |  |  |  |  |  |
| 48 | 20 | VTD - Compressed Air Production | manual | 1d | 2013-03-04 | 2013-03-04 |  |  |  |  |  |  |  |  |
| 49 | 21 | VTD - Manage the high voltage configuration (Desk control) | manual | 1d | 2013-03-04 | 2013-03-04 |  |  |  |  |  |  |  |  |
| 50 | 22 | VTD - Compressed Air Distribution | manual | 1d | 2013-03-04 | 2013-03-04 |  |  |  |  |  |  |  |  |
| 51 | 23 | VTD - Control the circuit breaker (Desk control) | manual | 1d | 2013-03-04 | 2013-03-04 |  |  |  |  |  |  |  |  |
| 52 | 24 | VTD - Manage the pantographs (Desk control) | manual | 1d | 2013-03-04 | 2013-03-04 |  |  |  |  |  |  |  |  |
| 53 | 25 | VTD - Grounding of the locomotive | manual | 1d | 2013-03-04 | 2013-03-04 |  |  |  |  |  |  |  |  |
| 54 | 26 | VTD - Pneumatic brake control | manual | 1d | 2013-03-04 | 2013-03-04 |  |  |  |  |  |  |  |  |
| 55 | 27 | VTD - Tape operating data | manual | 1d | 2013-03-04 | 2013-03-04 |  |  |  |  |  |  |  |  |
| 56 | 28 | VTD - Broadcast the time | manual | 1d | 2013-03-04 | 2013-03-04 |  |  |  |  |  |  |  |  |
| 57 | 29 | VTD - Generate Sounds | manual | 1d | 2013-03-04 | 2013-03-04 |  |  |  |  |  |  |  |  |
| 58 | 30 | VTD - Administrate locomotive topology (HMI Part) | manual | 1d | 2013-03-04 | 2013-03-04 |  |  |  |  |  |  |  |  |
| 59 | 31 | 0.1.1 | milestone, manual | 0d | 2013-03-04 | 2013-03-04 |  |  |  |  |  |  |  |  |
